# Project_plan

Schedule from MS Project, 2012-08-01 to 2012-10-23, costs in лв, A marks actual dates.
org

## Calendars

- Standard: Mon-Fri 08:00-12:00, 13:00-17:00; Sat-Sun off.

## Resources

| Resource | Rate |
| --- | --- |
| Project Manager | 10 |
| Software Architect | 10 |
| Database Designer | 10 |
| Designer | 10 |
| Implementer | 10 |
| System Analyst | 10 |
| Course Developer | 10 |
| Business Architect | 10 |
| Reviewer | 10 |
| Test Analyst | 10 |
| Tester | 10 |
| Technical Writer | 10 |

## Schedule

| ID | WBS | Task | Duration | Start | Finish | Predecessors | Complete | Remaining | Total slack | Free slack | Resources | Work | Actual work | Cost | Actual cost |
| --- | --- | --- | --- | --- | --- | --- | --- | --- | --- | --- | --- | --- | --- | --- | --- |
| 1 | 1 | **Система за управление на фирмен сервиз за превозни средства** | 60d | 2012-08-01 A | 2012-10-23 |  | 26% | 44.27d | 0d |  |  | 2054h | 516h | 20,540 | 5,160 |
| 2 | 1.1 | **I** | 9d | 2012-08-01 A | 2012-08-13 |  | 98% | 0.16d | 4.46d | 0d |  | 352h | 344h | 3,520 | 3,440 |
| 3 | 1.1.1 | Съставяне на проектен план | 6.25d | 2012-08-01 A | 2012-08-09 A |  | 100% |  |  |  | Project Manager [80%] | 40h | 40h | 400 | 400 |
| 4 | 1.1.2 | Определяне на ролите в екипа | 5d | 2012-08-01 A | 2012-08-07 A |  | 100% |  |  |  | Project Manager [20%] | 8h | 8h | 80 | 80 |
| 5 | 1.1.3 | Определяне на потребителските изисквания | 5d | 2012-08-01 A | 2012-08-07 A |  | 100% |  |  |  | Business Architect [50%]; System Analyst [50%] | 40h | 40h | 400 | 400 |
| 6 | 1.1.4 | Преглед на съществуващата инфраструктура | 1d | 2012-08-01 A | 2012-08-01 A |  | 100% |  |  |  | Software Architect | 8h | 8h | 80 | 80 |
| 7 | 1.1.5 | Изготвяне на визията на проекта | 3d | 2012-08-08 A | 2012-08-10 A | 5, 6, 4 | 100% |  |  |  | Business Architect; System Analyst | 48h | 48h | 480 | 480 |
| 8 | 1.1.6 | Изготвяне на план за управлението на качеството | 1d | 2012-08-01 A | 2012-08-01 A |  | 100% |  |  |  | Test Analyst | 8h | 8h | 80 | 80 |
| 9 | 1.1.7 | Изготвяне на документ с препоръки и изисквания при проектирането и разработката | 1d | 2012-08-02 A | 2012-08-02 A | 6 | 100% |  |  |  | Software Architect | 8h | 8h | 80 | 80 |
| 10 | 1.1.8 | Изготвяне на списък с рисковете | 1d | 2012-08-09 | 2012-08-10 | 3, 4 |  |  | 6.21d |  | Project Manager | 8h |  | 80 |  |
| 11 | 1.1.9 | **Уточняване на нещата необходими за следващите фази** | 7d | 2012-08-01 A | 2012-08-09 A |  | 100% |  |  |  |  | 120h | 120h | 1,200 | 1,200 |
| 12 | 1.1.9.1 | Уточняване на средата за проектиране | 5d | 2012-08-01 A | 2012-08-07 A |  | 100% |  |  |  | Designer | 40h | 40h | 400 | 400 |
| 13 | 1.1.9.2 | Уточняване на средата за разработка | 5d | 2012-08-03 A | 2012-08-09 A | 9 | 100% |  |  |  | Software Architect [20%] | 8h | 8h | 80 | 80 |
| 14 | 1.1.9.3 | Уточняване на системата за контрол на версиите (Version Control) | 5d | 2012-08-03 A | 2012-08-09 A | 9 | 100% |  |  |  | Software Architect [20%] | 8h | 8h | 80 | 80 |
| 15 | 1.1.9.4 | Уточняване на системата за контрол на задачите (Issue Tracker) | 5d | 2012-08-03 A | 2012-08-09 A | 9 | 100% |  |  |  | Software Architect [20%] | 8h | 8h | 80 | 80 |
| 16 | 1.1.9.5 | **Уточняване на хостинга върху който ще се разположи системата** | 5d | 2012-08-03 A | 2012-08-09 A |  | 100% |  |  |  |  | 56h | 56h | 560 | 560 |
| 17 | 1.1.9.5.1 | Уточняване на използвания Application / Web сървър | 5d | 2012-08-03 A | 2012-08-09 A | 9 | 100% |  |  |  | Software Architect [20%] | 8h | 8h | 80 | 80 |
| 18 | 1.1.9.5.2 | Уточняване на използваната система за управление на бази от данни | 5d | 2012-08-03 A | 2012-08-09 A | 9 | 100% |  |  |  | Software Architect [20%]; Database Designer [200%] | 48h | 48h | 480 | 480 |
| 19 | 1.1.10 | Изготвяне на упътване за конфигурация и използване на нужните интсртументи | 2d | 2012-08-10 A | 2012-08-13 A | 11 | 100% |  |  |  | Software Architect; Database Designer; Designer; Technical Writer | 64h | 64h | 640 | 640 |
| 20 | 1.2 | **E** | 15d | 2012-08-14 A | 2012-09-03 | 2 | 39% | 9.12d | 0d |  |  | 352h | 172h | 3,520 | 1,720 |
| 21 | 1.2.1 | Разработване на бизнес модел (BPM) | 8d | 2012-08-14 A | 2012-08-23 |  | 50% | 4d | 3.5d | 0d | Business Architect [50%]; System Analyst [50%] | 64h | 32h | 640 | 320 |
| 22 | 1.2.2 | Разработване на модел на данните (Data Model) | 7d | 2012-08-24 A | 2012-09-03 A | 21 | 100% |  |  |  | Database Designer [200%] | 112h | 112h | 1,120 | 1,120 |
| 23 | 1.2.3 | Разработване на случаите на употреба (Use-case) | 7d | 2012-08-24 A | 2012-09-03 | 21 | 50% | 3.5d | 0d |  | Business Architect [50%]; System Analyst [50%] | 56h | 28h | 560 | 280 |
| 24 | 1.2.4 | Изготвяне на софтуерната архитектура | 5d | 2012-08-14 | 2012-08-20 |  |  |  | 0d |  | Software Architect | 40h |  | 400 |  |
| 25 | 1.2.5 | Разработване на клас и обект диаграми (високо ниво) | 10d | 2012-08-21 | 2012-09-03 | 24 |  |  | 0d |  | Software Architect | 80h |  | 800 |  |

| ID | WBS | Task | Duration | Start | Finish | Predecessors | Total slack | Free slack | Resources | Work | Cost |
| --- | --- | --- | --- | --- | --- | --- | --- | --- | --- | --- | --- |
| 26 | 1.3 | **C** | 31d | 2012-09-04 | 2012-10-16 | 20 | 0d |  |  | 1246h | 12,460 |
| 27 | 1.3.1 | Разработване на поддържаща (системна) функционалност | 6d | 2012-09-04 | 2012-09-11 |  | 14d |  | Database Designer; Implementer | 68h | 680 |
| 28 | 1.3.2 | **Модул Склад** | 10d | 2012-09-04 | 2012-09-17 |  | 0d |  |  | 164h | 1,640 |
| 29 | 1.3.2.1 | Разработване на клас и обект диаграми (Class and Object Diagrams) | 3d | 2012-09-04 | 2012-09-06 |  | 0d |  | Software Architect; Designer [50%] | 24h | 240 |
| 30 | 1.3.2.2 | Разработване на диаграми на последователностите (Sequence Diagrams) | 3d | 2012-09-04 | 2012-09-06 |  | 0d |  | Designer [25%] | 6h | 60 |
| 31 | 1.3.2.3 | Разработване на диаграми на състоянията (State Diagrams) | 3d | 2012-09-04 | 2012-09-06 |  | 0d |  | Designer [25%] | 6h | 60 |
| 32 | 1.3.2.4 | Имплементиране на модула | 7d | 2012-09-07 | 2012-09-17 | 31, 30, 29 | 1d | 0d | Implementer [200%] | 112h | 1,120 |
| 33 | 1.3.2.5 | Разработване на тестови случаи | 2d | 2012-09-07 | 2012-09-10 | 29, 30, 31 | 15d |  | Test Analyst | 16h | 160 |
| 34 | 1.3.3 | **Модул Примане на автомобили** | 10d | 2012-09-07 | 2012-09-20 |  | 0d |  |  | 164h | 1,640 |
| 35 | 1.3.3.1 | Разработване на клас и обект диаграми (Class and Object Diagrams) | 3d | 2012-09-07 | 2012-09-11 | 29 | 0d |  | Software Architect; Designer [50%] | 24h | 240 |
| 36 | 1.3.3.2 | Разработване на диаграми на последователностите (Sequence Diagrams) | 3d | 2012-09-07 | 2012-09-11 | 30 | 0d |  | Designer [25%] | 6h | 60 |
| 37 | 1.3.3.3 | Разработване на диаграми на състоянията (State Diagrams) | 3d | 2012-09-07 | 2012-09-11 | 31 | 0d |  | Designer [25%] | 6h | 60 |
| 38 | 1.3.3.4 | Имплементиране на модула | 7d | 2012-09-12 | 2012-09-20 | 35, 36, 37 | 0d |  | Implementer [200%] | 112h | 1,120 |
| 39 | 1.3.3.5 | Разработване на тестови случаи | 2d | 2012-09-12 | 2012-09-13 | 35, 36, 37 | 12d |  | Test Analyst | 16h | 160 |
| 40 | 1.3.4 | **Модул Гаранционни автомобили** | 9d | 2012-09-12 | 2012-09-24 |  | 1d |  |  | 132h | 1,320 |
| 41 | 1.3.4.1 | Разработване на клас и обект диаграми (Class and Object Diagrams) | 3d | 2012-09-12 | 2012-09-14 | 35 | 1d | 0d | Software Architect; Designer [50%] | 24h | 240 |
| 42 | 1.3.4.2 | Разработване на диаграми на последователностите (Sequence Diagrams) | 3d | 2012-09-12 | 2012-09-14 | 36 | 1d | 0d | Designer [25%] | 6h | 60 |
| 43 | 1.3.4.3 | Разработване на диаграми на състоянията (State Diagrams) | 3d | 2012-09-12 | 2012-09-14 | 37 | 1d | 0d | Designer [25%] | 6h | 60 |
| 44 | 1.3.4.4 | Имплементиране на модула | 5d | 2012-09-18 | 2012-09-24 | 41, 42, 43, 32 | 1d | 0d | Implementer [200%] | 80h | 800 |
| 45 | 1.3.4.5 | Разработване на тестови случаи | 2d | 2012-09-17 | 2012-09-18 | 41, 42, 43 | 9d |  | Test Analyst | 16h | 160 |
| 46 | 1.3.5 | **Модул Счетоводство** | 11d | 2012-09-17 | 2012-10-01 |  | 0d |  |  | 164h | 1,640 |
| 47 | 1.3.5.1 | Разработване на клас и обект диаграми (Class and Object Diagrams) | 3d | 2012-09-17 | 2012-09-19 | 41 | 1d | 0d | Software Architect; Designer [50%] | 24h | 240 |
| 48 | 1.3.5.2 | Разработване на диаграми на последователностите (Sequence Diagrams) | 3d | 2012-09-17 | 2012-09-19 | 42 | 1d | 0d | Designer [25%] | 6h | 60 |
| 49 | 1.3.5.3 | Разработване на диаграми на състоянията (State Diagrams) | 3d | 2012-09-17 | 2012-09-19 | 43 | 1d | 0d | Designer [25%] | 6h | 60 |
| 50 | 1.3.5.4 | Имплементиране на модула | 7d | 2012-09-21 | 2012-10-01 | 47, 48, 49, 38 | 0d |  | Implementer [200%] | 112h | 1,120 |
| 51 | 1.3.5.5 | Разработване на тестови случаи | 2d | 2012-09-20 | 2012-09-21 | 47, 48, 49 | 6d |  | Test Analyst | 16h | 160 |

| ID | WBS | Task | Duration | Start | Finish | Predecessors | Total slack | Free slack | Resources | Work | Cost |
| --- | --- | --- | --- | --- | --- | --- | --- | --- | --- | --- | --- |
| 52 | 1.3.6 | **Модул Електронно регистриране** | 7d | 2012-09-20 | 2012-09-28 |  | 1d |  |  | 112h | 1,120 |
| 53 | 1.3.6.1 | Разработване на клас и обект диаграми (Class and Object Diagrams) | 3d | 2012-09-20 | 2012-09-24 | 47 | 1d | 0d | Software Architect; Designer [50%] | 20h | 200 |
| 54 | 1.3.6.2 | Разработване на диаграми на последователностите (Sequence Diagrams) | 3d | 2012-09-20 | 2012-09-24 | 48 | 1d | 0d | Designer [25%] | 6h | 60 |
| 55 | 1.3.6.3 | Разработване на диаграми на състоянията (State Diagrams) | 3d | 2012-09-20 | 2012-09-24 | 49 | 1d | 0d | Designer [25%] | 6h | 60 |
| 56 | 1.3.6.4 | Имплементиране на модула | 4d | 2012-09-25 | 2012-09-28 | 53, 54, 55, 44 | 1d |  | Implementer [200%] | 64h | 640 |
| 57 | 1.3.6.5 | Разработване на тестови случаи | 2d | 2012-09-25 | 2012-09-26 | 53, 54, 55 | 3d |  | Test Analyst | 16h | 160 |
| 58 | 1.3.7 | **Тестване на системата** | 10d | 2012-10-02 | 2012-10-15 | 27, 28, 34, 40, 46, 52 | 0d |  |  | 160h | 1,600 |
| 59 | 1.3.7.1 | Функционални тестове | 10d | 2012-10-02 | 2012-10-15 |  | 0d |  | Test Analyst [50%]; Tester | 80h | 800 |
| 60 | 1.3.7.2 | Нефункционални тестове | 10d | 2012-10-02 | 2012-10-15 |  | 0d |  | Test Analyst [50%]; Tester | 80h | 800 |
| 61 | 1.3.8 | Изготвяне на материали за обучение | 25d | 2012-09-04 | 2012-10-08 |  | 5d | 0d | Course Developer | 200h | 2,000 |
| 62 | 1.3.9 | Изготвяне на план за обучение | 1d | 2012-10-09 | 2012-10-09 | 61, 28, 34, 40, 46 | 5d |  | Project Manager; Course Developer [200%] | 16h | 160 |
| 63 | 1.3.10 | Изготвяне на документация за поддръжка и обслужване на системата | 25d | 2012-09-04 | 2012-10-08 |  | 6d |  | Technical Writer [25%] | 50h | 500 |
| 64 | 1.3.11 | Изготвяне на план за разгъване на системата | 1d | 2012-10-16 | 2012-10-16 | 58 | 0d |  | Project Manager; Software Architect | 16h | 160 |
| 65 | 1.4 | **T** | 5d | 2012-10-17 | 2012-10-23 | 26 | 0d |  |  | 104h | 1,040 |
| 66 | 1.4.1 | Разгъване, стартиране и конфигуриране на системата | 1d | 2012-10-17 | 2012-10-17 |  | 4d |  | Software Architect | 8h | 80 |
| 67 | 1.4.2 | Предаване на документацията по проекта | 1d | 2012-10-17 | 2012-10-17 |  | 4d |  | Business Architect; Project Manager | 16h | 160 |
| 68 | 1.4.3 | Обучение на персонала | 5d | 2012-10-17 | 2012-10-23 |  | 0d |  | Course Developer [200%] | 80h | 800 |
